# Programa V2 REV2 23-02-2017

Schedule from MS Project, 2017-02-08 to 2017-03-23, 9 hours a day.

## Calendars

- Estándar: Mon-Fri 09:00-13:00, 15:00-19:00; Sat-Sun off. Exceptions (off unless hours are given): 2017-02-18 08:00-18:00 (Ceso 1), 2017-02-25 08:00-18:00 (Ceso 2), 2017-03-06 to 2017-03-26 08:00-20:00 (Parada de planta).
- 24 horas: Mon-Sun 00:00-24:00.

## Resources

| Resource | Rate |
| --- | --- |
| Foreman | 20 |
| Master 1st | 20 |
| Assistant | 10 |
| boom truck operator | 12 |
| Driver | 15 |
| Electric | 18 |
| Rigger | 15 |
| oxygenist | 20 |
| man lift operator | 10 |
| Driver | 15 |
| crane operator | 12 |
| Master 2nd | 18 |
| preventionist | 30 |
| low bed operator | 10 |
| Welder | 15 |

## Schedule

| ID | WBS | Task | Type | Duration | Start | Finish | Predecessors | Total slack | Free slack |
| --- | --- | --- | --- | --- | --- | --- | --- | --- | --- |
| 1 | 1 | **MILESTONES** |  | 40.89d | 2017-02-08 | 2017-03-23 |  | 0d |  |
| 2 | 1.1 | kick off meeting | milestone | 0d | 2017-02-08 | 2017-02-08 |  | 0d |  |
| 3 | 1.2 | ASDET personnel accreditation | milestone | 0d | 2017-03-03 | 2017-03-03 | 50FF, 51FF, 52FF, 4 | 0.72d | 0d |
| 4 | 1.3 | Personal accreditation for direct work | milestone | 0d | 2017-03-03 | 2017-03-03 | 52, 41FF, 42FF, 43FF | 0.72d | 0d |
| 5 | 1.4 | Start plant shutdown | milestone | 0d | 2017-03-06 | 2017-03-06 | 2FS+164.01h, 3 | 0d |  |
| 6 | 1.5 | Area delivery by CODELCO | milestone | 0d | 2017-03-08 | 2017-03-08 | 5FS+24h, 46 | 0d |  |
| 7 | 1.6 | Term Tie - In Industrial Water | milestone | 0d | 2017-03-17 | 2017-03-17 | 128 | 7.58d | 6.86d |
| 8 | 1.7 | Duct assembly term | milestone | 0d | 2017-03-20 | 2017-03-20 | 112FF | 3.72d |  |
| 9 | 1.8 | End instrumentation assembly | milestone | 0d | 2017-03-22 | 2017-03-22 | 148 | 1d |  |
| 10 | 1.9 | Term electrical assembly | milestone | 0d | 2017-03-22 | 2017-03-22 | 148 | 1d |  |
| 11 | 1.10 | protocol delivery | milestone | 0d | 2017-03-23 | 2017-03-23 | 159FF, 108FF | 0.72d |  |
| 12 | 1.11 | Delivery Engineering Tie In General | milestone | 0d | 2017-02-21 | 2017-02-21 | 2FS+10d | 31.61d | 20d |
| 13 | 1.12 | Delivery of plans Tie In Industrial Water | milestone | 0d | 2017-02-08 | 2017-02-08 | 2 | 29.39d | 0d |
| 14 | 2 | **cabinet work** |  | 30d | 2017-02-08 | 2017-03-14 |  | 3.22d |  |
| 15 | 2.1 | **Personnel Accreditation** |  | 19.5d | 2017-02-08 | 2017-03-06 |  | 3.22d |  |
| 16 | 2.1.1 | Staff pick |  | 3d | 2017-02-08 | 2017-02-13 | 2 | 3.22d | 0d |
| 17 | 2.1.2 | Recruitment | milestone | 0d | 2017-02-13 | 2017-02-13 | 16 | 5.22d | 0d |
| 18 | 2.1.3 | **Cessation** |  | 11d | 2017-02-13 | 2017-02-27 |  | 3.22d |  |
| 19 | 2.1.3.1 | CESO Group 1 |  | 3d | 2017-02-13 | 2017-02-16 | 16 | 11.22d | 0d |
| 20 | 2.1.3.2 | CESO Group 2 |  | 3d | 2017-02-20 | 2017-02-24 | 16FS+6d | 5.22d | 0d |
| 21 | 2.1.3.3 | CESO Group 3 |  | 3d | 2017-02-23 | 2017-02-27 | 16FS+8d | 3.22d | 0d |
| 22 | 2.1.4 | **Required Exams** |  | 17d | 2017-02-08 | 2017-03-02 |  | 3.89d |  |
| 23 | 2.1.4.1 | **Arsenic Tests** |  | 12d | 2017-02-15 | 2017-03-02 |  | 0.72d |  |
| 24 | 2.1.4.1.1 | Request group 1 | milestone | 0d | 2017-02-15 | 2017-02-15 | 2FS+5d | 3.72d | 0d |
| 25 | 2.1.4.1.2 | Request group 2 | milestone | 0d | 2017-02-16 | 2017-02-16 | 2FS+6d | 1.72d | 0d |
| 26 | 2.1.4.1.3 | request group 3 | milestone | 0d | 2017-02-17 | 2017-02-17 | 2FS+7d | 0.72d | 0d |
| 27 | 2.1.4.1.4 | group 1 exams |  | 6d | 2017-02-17 | 2017-02-25 | 24FS+2d | 3.72d | 0d |
| 28 | 2.1.4.1.5 | Group 2 exams |  | 6d | 2017-02-22 | 2017-03-01 | 25FS+4d | 1.72d | 0d |
| 29 | 2.1.4.1.6 | Group 3 exams |  | 6d | 2017-02-23 | 2017-03-02 | 26FS+4d | 0.72d | 0d |

| ID | WBS | Task | Type | Duration | Start | Finish | Predecessors | Total slack | Free slack |
| --- | --- | --- | --- | --- | --- | --- | --- | --- | --- |
| 30 | 2.1.4.2 | **Pre - Occupational Exams** |  | 9.5d | 2017-02-13 | 2017-02-24 |  | 5.22d |  |
| 31 | 2.1.4.2.1 | Group 1 exam request |  | 4d | 2017-02-13 | 2017-02-17 | 17SS | 8.22d | 0d |
| 32 | 2.1.4.2.2 | Group 2 exam request |  | 4d | 2017-02-15 | 2017-02-20 | 17SS+2d | 7.22d | 0d |
| 33 | 2.1.4.2.3 | Group 3 exam request |  | 4d | 2017-02-16 | 2017-02-21 | 17SS+3d | 5.22d | 0d |
| 34 | 2.1.4.2.4 | Group 1 exams |  | 0.5d | 2017-02-20 | 2017-02-21 | 31FS+2d | 8.22d | 4.5d |
| 35 | 2.1.4.2.5 | Group 2 exams |  | 0.5d | 2017-02-22 | 2017-02-22 | 32FS+1d | 7.22d | 5.5d |
| 36 | 2.1.4.2.6 | Group 3 exams |  | 0.5d | 2017-02-24 | 2017-02-24 | 33FS+2d | 5.22d | 4.5d |
| 37 | 2.1.4.3 | **Procedures, training, dissemination and evaluation** |  | 15d | 2017-02-08 | 2017-02-28 |  | 5.89d |  |
| 38 | 2.1.4.3.1 | Preparation of structural procedures |  | 6d | 2017-02-08 | 2017-02-16 | 16SS | 9.5d | 0d |
| 39 | 2.1.4.3.2 | Preparation of instructions |  | 6d | 2017-02-08 | 2017-02-16 | 16SS | 9.5d | 0d |
| 40 | 2.1.4.3.3 | Dissemination and evaluation Procedures |  | 7d | 2017-02-09 | 2017-02-18 | 38SS+1.22d, 39SS+1.22d | 9.5d | 5.78d |
| 41 | 2.1.4.3.4 | FULIGA talk group 1 |  | 1d | 2017-02-16 | 2017-02-17 | 16, 19 | 11.22d | 10.5d |
| 42 | 2.1.4.3.5 | FULIGA talk group 2 |  | 1d | 2017-02-24 | 2017-02-25 | 16, 20 | 5.22d | 4.5d |
| 43 | 2.1.4.3.6 | FULIGA talk group 3 |  | 1d | 2017-02-27 | 2017-02-28 | 16, 21 | 3.22d | 2.5d |
| 44 | 2.1.4.3.7 | Practical height course |  | 1d | 2017-02-17 | 2017-02-18 | 17SS+4d | 9.72d | 6d |
| 45 | 2.1.4.3.8 | ODI broadcast |  | 7d | 2017-02-13 | 2017-02-21 | 17 | 7.72d | 4d |
| 46 | 2.1.4.3.9 | constructability workshop |  | 1d | 2017-02-24 | 2017-02-25 | 57, 60 | 7.89d |  |
| 47 | 2.1.5 | Review personal folders group 1 |  | 0.5d | 2017-02-27 | 2017-02-27 | 27FS+1d, 16, 34, 40, 44, 45, 19 | 3.72d | 0d |
| 48 | 2.1.6 | Review personal folders group 2 |  | 0.5d | 2017-03-01 | 2017-03-02 | 28, 35, 16, 40, 44, 45, 20 | 1.72d | 0d |
| 49 | 2.1.7 | Review personal folders group 3 |  | 0.5d | 2017-03-02 | 2017-03-03 | 29, 36, 16, 40, 44, 45, 21 | 0.72d | 0d |
| 50 | 2.1.8 | Presentation personal folders group 1 | milestone | 0d | 2017-02-27 | 2017-02-27 | 47 | 3.72d | 3d |
| 51 | 2.1.9 | Presentation personal folders group 2 | milestone | 0d | 2017-03-02 | 2017-03-02 | 48 | 1.72d | 1d |
| 52 | 2.1.10 | Presentation personal folders group 3 | milestone | 0d | 2017-03-03 | 2017-03-03 | 49 | 0.72d | 0d |
| 53 | 2.1.11 | Entrance of electrical personnel to the site | milestone | 0d | 2017-03-06 | 2017-03-06 | 3FS+2d | 16.11d | 2.61d |

| ID | WBS | Task | Type | Duration | Start | Finish | Predecessors | Total slack | Free slack | Calendar |
| --- | --- | --- | --- | --- | --- | --- | --- | --- | --- | --- |
| 54 | 2.2 | **Certifications and Technical Documents** |  | 8d | 2017-02-24 | 2017-03-07 |  | 7.89d |  |  |
| 55 | 2.2.1 | Certificados de soldadores | milestone | 0d | 2017-02-28 | 2017-02-28 | 2FS+15d | 15.61d | 14.89d |  |
| 56 | 2.2.2 | Estado de certificación de andamios | milestone | 0d | 2017-02-27 | 2017-02-27 | 2FS+14d | 12.33d | 11.61d |  |
| 57 | 2.2.3 | Memoria de cálculo y plan de izaje | milestone | 0d | 2017-02-24 | 2017-02-24 | 2FS+12d | 7.89d | 0d |  |
| 58 | 2.2.4 | Dossier Calidad y memoría cálculo yugo ducto | milestone | 0d | 2017-03-07 | 2017-03-07 | 2FS+20d | 21.61d | 20.89d |  |
| 59 | 2.2.5 | PIE Ducto | milestone | 0d | 2017-02-27 | 2017-02-27 | 2FS+14d | 16.61d | 15.89d |  |
| 60 | 2.2.6 | Modelo 3D para izaje | milestone | 0d | 2017-02-24 | 2017-02-24 | 2FS+12d | 7.89d | 0d |  |
| 61 | 2.2.7 | Trazado eléctrico en terreno |  | 1d | 2017-02-27 | 2017-02-28 | 2FS+14d | 11.61d | 0d |  |
| 62 | 2.2.8 | Estado requerimientos eléctricos | milestone | 0d | 2017-02-28 | 2017-02-28 | 2, 61 | 11.61d | 0d |  |
| 63 | 2.3 | **acquisitions** |  | 30d | 2017-02-08 | 2017-03-14 |  | 11.61d |  |  |
| 64 | 2.3.1 | Manufacture TE 10X6" tie in industrial water |  | 7d | 2017-02-08 | 2017-02-17 | 13 | 31.81d | 24.22d |  |
| 65 | 2.3.2 | Manufacture of tie-in supports |  | 8d | 2017-02-08 | 2017-02-18 | 13 | 31d | 23.42d |  |
| 66 | 2.3.3 | Valve 6" tie in water |  | 10d | 2017-02-08 | 2017-02-21 | 13 | 29.39d | 21.81d |  |
| 67 | 2.3.4 | Purchase of materials and supplies |  | 15d | 2017-02-28 | 2017-03-14 | 2SS+5d, 62, 12FF | 11.61d |  |  |
| 68 | 2.3.5 | PPE purchases |  | 15d | 2017-02-15 | 2017-03-07 | 2SS+5d | 21.61d |  |  |
| 69 | 2.4 | **Equipment accreditation** |  | 9d | 2017-02-20 | 2017-03-03 |  | 2.89d |  |  |
| 70 | 2.4.1 | Pre-certification of equipment in Rancagua |  | 3d | 2017-02-20 | 2017-02-24 | 2SS+9d | 2.89d | 0d |  |
| 71 | 2.4.2 | Crane accreditation |  | 6d | 2017-02-24 | 2017-03-03 | 70 | 2.89d | 0d |  |
| 72 | 2.4.3 | Hoist accreditation |  | 6d | 2017-02-24 | 2017-03-03 | 70 | 2.89d | 0d |  |
| 73 | 2.4.4 | Truck Accreditation |  | 6d | 2017-02-24 | 2017-03-03 | 70 | 2.89d | 0d |  |
| 74 | 2.4.5 | Boom Truck Accreditation |  | 6d | 2017-02-24 | 2017-03-03 | 70 | 2.89d | 0d |  |
| 75 | 2.4.6 | Minor Equipment Certification |  | 6d | 2017-02-24 | 2017-03-03 | 70 | 2.89d | 0d |  |
| 76 | 2.4.7 | Equipment Certification | milestone | 0d | 2017-03-03 | 2017-03-03 | 71, 72, 73, 74, 75 | 2.89d |  |  |
| 77 | 3 | **TIE-IN WORKS** |  | 24.21d | 2017-03-03 | 2017-03-23 |  | 0d |  |  |
| 78 | 3.1 | **PRELIMINARY WORKS "TIE-IN""** |  | 24.21d | 2017-03-03 | 2017-03-23 |  | 0d |  |  |
| 79 | 3.1.1 | transfer of pipeline |  | 5h | 2017-03-03 | 2017-03-03 | 2FS+17.4d | 9.66d | 2.93d |  |
| 80 | 3.1.2 | Slaughter facility transfer |  | 2h | 2017-03-08 | 2017-03-08 | 76, 6 | 0d |  |  |
| 81 | 3.1.3 | slaughter facility |  | 1d | 2017-03-08 | 2017-03-08 | 80 | 0d |  |  |
| 82 | 3.1.4 | initial topography |  | 1d | 2017-03-08 | 2017-03-08 | 81SS | 0.72d | 0d |  |
| 83 | 3.1.5 | Lifeline installation |  | 1d | 2017-03-08 | 2017-03-08 | 81SS | 0.72d | 0d |  |
| 84 | 3.1.6 | Yellowing of planes |  | 1d | 2017-03-22 | 2017-03-23 | 81SS, 148 | 0d |  |  |
| 85 | 3.1.7 | Unchape (ear review) |  | 1d | 2017-03-08 | 2017-03-09 | 82, 83 | 0.72d | 0d |  |
| 86 | 3.1.8 | plant cooling |  | 36h | 2017-03-06 | 2017-03-07 | 5SS | 42.06d |  | 24 horas |
| 87 | 3.1.9 | Start of locks |  | 1d | 2017-03-09 | 2017-03-10 | 85 | 0.72d | 0d |  |
| 88 | 3.1.10 | Removal of isolation and transport to dump |  | 1d | 2017-03-10 | 2017-03-11 | 87 | 0.72d | 0d |  |
| 89 | 3.1.11 | crane positioning |  | 1d | 2017-03-10 | 2017-03-11 | 6, 82, 85, 87 | 1.22d | 0.5d |  |
| 90 | 3.1.12 | Duct pre-assembly completion |  | 2d | 2017-03-08 | 2017-03-09 | 6, 79 | 6.72d | 6d |  |
| 91 | 3.1.13 | Support structure installation |  | 1d | 2017-03-08 | 2017-03-08 | 6 | 19.72d |  |  |
| 92 | 3.1.14 | Removal of instrumentation and wiring |  | 1d | 2017-03-08 | 2017-03-08 | 6 | 19.72d |  |  |

| ID | WBS | Task | Type | Duration | Start | Finish | Predecessors | Total slack | Free slack |
| --- | --- | --- | --- | --- | --- | --- | --- | --- | --- |
| 93 | 3.2 | **REMOVAL OF EXISTING INSTALLATIONS** |  | 5.78d | 2017-03-09 | 2017-03-14 |  | 0.72d |  |
| 94 | 3.2.1 | Installation of equipment |  | 0.5d | 2017-03-11 | 2017-03-11 | 88 | 0.72d | 0d |
| 95 | 3.2.2 | ear check |  | 1d | 2017-03-09 | 2017-03-10 | 85 | 2.22d | 1.5d |
| 96 | 3.2.3 | Maneuver |  | 4h | 2017-03-11 | 2017-03-11 | 94, 56, 89, 95 | 0.72d | 0d |
| 97 | 3.2.4 | Duct obstructed |  | 3h | 2017-03-11 | 2017-03-12 | 96 | 0.72d | 0d |
| 98 | 3.2.5 | topographic survey |  | 0.5d | 2017-03-11 | 2017-03-11 | 94 | 1d | 0.28d |
| 99 | 3.2.6 | Duct cutting with plasma system |  | 0.5d | 2017-03-12 | 2017-03-12 | 98, 97 | 0.72d | 0d |
| 100 | 3.2.7 | Existing pipeline removal |  | 0.5d | 2017-03-12 | 2017-03-12 | 99 | 1.22d | 0d |
| 101 | 3.2.8 | Extracted duct neutralization |  | 0.5d | 2017-03-12 | 2017-03-12 | 99 | 1.22d | 0.5d |
| 102 | 3.2.9 | insulation cut |  | 1d | 2017-03-12 | 2017-03-13 | 99 | 0.72d | 0d |
| 103 | 3.2.10 | Physical cleaning - chemical cutting |  | 1d | 2017-03-13 | 2017-03-14 | 102, 100, 101 | 0.72d | 0d |
| 104 | 3.3 | **NEW DUCT ASSEMBLY** |  | 10.5d | 2017-03-12 | 2017-03-20 |  | 2.22d |  |
| 105 | 3.3.1 | topographic survey |  | 0.5d | 2017-03-12 | 2017-03-13 | 100 | 2.22d | 0d |
| 106 | 3.3.2 | hoisting maneuver |  | 0.5d | 2017-03-14 | 2017-03-14 | 100, 90, 103 | 0.72d | 0d |
| 107 | 3.3.3 | New pipeline positioning |  | 0.5d | 2017-03-14 | 2017-03-14 | 106, 105 | 0.72d | 0d |
| 108 | 3.3.4 | crane removal |  | 1d | 2017-03-14 | 2017-03-15 | 107 | 10.72d | 10d |
| 109 | 3.3.5 | New pipeline welding |  | 5d | 2017-03-14 | 2017-03-18 | 107, 59, 55 | 0.72d | 0d |
| 110 | 3.3.6 | Test plan and quality control |  | 1d | 2017-03-18 | 2017-03-19 | 109 | 0.72d | 0d |
| 111 | 3.3.7 | Instrumentation installation |  | 1d | 2017-03-19 | 2017-03-20 | 110 | 0.72d | 0d |
| 112 | 3.3.8 | coating placement |  | 1d | 2017-03-20 | 2017-03-20 | 111 | 0.72d | 0d |
| 113 | 3.4 | **TIE - IN INDUSTRIAL WATER** |  | 6.14d | 2017-03-13 | 2017-03-17 |  | 7.58d |  |
| 114 | 3.4.1 | Delivery area tie in water | milestone | 0d | 2017-03-13 | 2017-03-13 | 105 | 7.58d | 0d |
| 115 | 3.4.2 | Check mechanical blocking point and blocking |  | 4h | 2017-03-13 | 2017-03-13 | 114 | 7.58d | 0d |
| 116 | 3.4.3 | area isolation |  | 1d | 2017-03-13 | 2017-03-14 | 114, 115 | 7.58d | 0d |
| 117 | 3.4.4 | pipe drain |  | 6h | 2017-03-14 | 2017-03-14 | 116 | 7.58d | 0d |
| 118 | 3.4.5 | Installation of temporary ears to the duct to be removed |  | 4h | 2017-03-14 | 2017-03-15 | 117 | 7.58d | 0d |
| 119 | 3.4.6 | pipe cutting |  | 3h | 2017-03-15 | 2017-03-15 | 118 | 7.58d | 0d |
| 120 | 3.4.7 | Existing section removal maneuver |  | 4h | 2017-03-15 | 2017-03-15 | 119 | 7.58d | 0d |
| 121 | 3.4.8 | Capping of pipe and TE |  | 1.5h | 2017-03-15 | 2017-03-15 | 120, 64 | 7.58d | 0d |
| 122 | 3.4.9 | Presentation and template of TE in pipeline |  | 15min | 2017-03-15 | 2017-03-15 | 121 | 7.58d | 0d |
| 123 | 3.4.10 | Pipe / TE and flange welding |  | 30min | 2017-03-15 | 2017-03-15 | 122, 65 | 7.58d | 0d |
| 124 | 3.4.11 | penetrating inks |  | 3h | 2017-03-15 | 2017-03-16 | 123 | 7.58d | 0d |
| 125 | 3.4.12 | valve assembly |  | 4h | 2017-03-16 | 2017-03-16 | 124, 66 | 7.58d | 0d |
| 126 | 3.4.13 | Installation of flange to valve with pipe of 6 " |  | 3h | 2017-03-16 | 2017-03-16 | 125 | 7.58d | 0d |
| 127 | 3.4.14 | Evidence |  | 4h | 2017-03-16 | 2017-03-17 | 124, 126 | 7.58d | 0d |
| 128 | 3.4.15 | Delivery of protocols tie in industrial water |  | 1d | 2017-03-17 | 2017-03-17 | 127 | 7.58d | 0d |

| ID | WBS | Task | Duration | Start | Finish | Predecessors | Total slack | Free slack |
| --- | --- | --- | --- | --- | --- | --- | --- | --- |
| 129 | 3.5 | **ELECTRICAL INSTALLATIONS** | 19.5d | 2017-03-08 | 2017-03-22 |  | 0d |  |
| 130 | 3.5.1 | **minor electrical equipment** | 11.5d | 2017-03-08 | 2017-03-16 |  | 0d |  |
| 131 | 3.5.1.1 | **local station start/stop** | 2d | 2017-03-08 | 2017-03-10 |  | 13.5d |  |
| 132 | 3.5.1.1.1 | Manufacture and assembly of boxes | 2d | 2017-03-08 | 2017-03-10 | 81, 53 | 13.5d | 0d |
| 133 | 3.5.1.2 | **emergency stop station** | 2d | 2017-03-08 | 2017-03-10 |  | 13.5d |  |
| 134 | 3.5.1.2.1 | Manufacture and assembly of boxes | 2d | 2017-03-08 | 2017-03-10 | 132SS | 13.5d | 0d |
| 135 | 3.5.1.3 | **Power and control panel** | 5d | 2017-03-08 | 2017-03-12 |  | 14.5d |  |
| 136 | 3.5.1.3.1 | Panel removal and transfer | 1d | 2017-03-08 | 2017-03-09 | 134SS | 14.5d | 0d |
| 137 | 3.5.1.3.2 | panel modification | 4d | 2017-03-09 | 2017-03-12 | 136 | 14.5d | 0d |
| 138 | 3.5.1.3.3 | panel placement | 1d | 2017-03-09 | 2017-03-10 | 137SS | 15.5d |  |
| 139 | 3.5.1.4 | **circuit breaker** | 3.5d | 2017-03-08 | 2017-03-10 |  | 0d |  |
| 140 | 3.5.1.4.1 | Facility | 2d | 2017-03-09 | 2017-03-10 | 141 | 15d |  |
| 141 | 3.5.1.4.2 | layout | 1.5d | 2017-03-08 | 2017-03-09 | 81SS | 0d |  |
| 142 | 3.5.1.5 | **Canalization and electrical assembly** | 10d | 2017-03-09 | 2017-03-16 |  | 0d |  |
| 143 | 3.5.1.5.1 | manufacturing support | 10d | 2017-03-09 | 2017-03-16 | 141 | 0d |  |
| 144 | 3.5.1.5.2 | support mount | 7d | 2017-03-10 | 2017-03-16 | 143SS+2d | 0d |  |
| 145 | 3.5.1.5.3 | pipeline assembly | 7d | 2017-03-10 | 2017-03-16 | 144SS | 0d |  |
| 146 | 3.5.2 | Cabling | 6d | 2017-03-16 | 2017-03-20 | 145 | 0d |  |
| 147 | 3.5.3 | Wiring | 2d | 2017-03-20 | 2017-03-22 | 146, 132, 134 | 0d |  |
| 148 | 3.5.4 | Start up | 1d | 2017-03-22 | 2017-03-22 | 147, 138, 140 | 0d |  |
| 149 | 3.6 | **MANHOLE SHIFT** | 3d | 2017-03-20 | 2017-03-23 |  | 0.72d |  |
| 150 | 3.6.1 | Placement of fire blanket | 1d | 2017-03-20 | 2017-03-21 | 112 | 0.72d | 0d |
| 151 | 3.6.2 | ARS grill placement | 1d | 2017-03-20 | 2017-03-21 | 112 | 0.72d | 0d |
| 152 | 3.6.3 | Work area confinement | 1d | 2017-03-20 | 2017-03-21 | 112 | 0.72d | 0d |
| 153 | 3.6.4 | Existing manhole removal | 1d | 2017-03-21 | 2017-03-22 | 152, 150, 151 | 0.72d | 0d |
| 154 | 3.6.5 | manhole installation | 1d | 2017-03-22 | 2017-03-23 | 153 | 0.72d | 0d |
| 155 | 3.6.6 | manhole weld | 1d | 2017-03-22 | 2017-03-23 | 154SS | 0.72d | 0d |

| ID | WBS | Task | Type | Duration | Start | Finish | Predecessors | Total slack | Free slack |
| --- | --- | --- | --- | --- | --- | --- | --- | --- | --- |
| 156 | 3.7 | **PROTOCOL AND AREA DELIVERY** |  | 1d | 2017-03-22 | 2017-03-23 |  | 0.72d |  |
| 157 | 3.7.1 | **Reception of works** |  | 1d | 2017-03-22 | 2017-03-23 |  | 0.72d |  |
| 158 | 3.7.1.1 | protocol delivery |  | 1d | 2017-03-22 | 2017-03-23 | 155FF, 147FF, 112FF, 58FF, 128FF, 7FF | 0.72d | 0d |
| 159 | 3.7.1.2 | area delivery | milestone | 0d | 2017-03-23 | 2017-03-23 | 148FF, 155FF, 158FF | 0.72d | 0d |
